# Cronograma

Schedule from MS Project, 2017-05-15 to 2017-06-29, costs in R$, A marks actual dates.

## Calendars

- Padrão: Mon-Fri 09:00-12:00, 13:00-18:00; Sat-Sun off.

## Resources

| Resource |
| --- |
| Analista 01 |
| Analista 02 |
| Cliente |
| Gerente do Projeto |
| Analista 03 |
| Analista 03, Analista 4 |
| Analista 03, Analista 4, Analista 5 |
| Analista 04 |
| Analista 01, Analista 05 |
| Analista 01, Analista 03 |
| Analista 02, Anlista 03 |
| Analista 02, Anlista 04 |
| Analista 02, Anlista 05 |
| Analista 02, Anlista 04, Analista 05 |

## Schedule

| ID | WBS | Task | Duration | Start | Finish | Predecessors | Complete | Baseline start | Baseline finish | Baseline duration | Baseline 1 start | Baseline 1 finish | Constraint | Resources | Work | Actual work | Cost | Baseline cost | Actual cost |
| --- | --- | --- | --- | --- | --- | --- | --- | --- | --- | --- | --- | --- | --- | --- | --- | --- | --- | --- | --- |
| 1 | 1 | **Projeto Sistema de Integração Elétrica** | 33.25d? | 2017-05-15 09:00 A | 2017-06-29 11:00 A |  | 100% | 2017-05-15 09:00 | 2017-06-29 17:15 | 33.91d? | 2017-05-11 09:00 | 2017-07-03 09:24 |  |  | 133.1h | 133.1h | 15,352.5 | 21,387.5 | 15,352.5 |
| 2 | 1.1 | **Prospecção** | 5d | 2017-05-15 09:00 A | 2017-05-19 18:00 A |  | 100% | 2017-05-15 09:00 | 2017-05-19 14:00 | 4.5d | 2017-05-11 09:00 | 2017-05-15 15:00 |  |  | 14h | 14h | 1,850 | 1,275 | 1,850 |
| 3 | 1.1.1 | **Proposta Técnica** | 4.62d | 2017-05-15 09:00 A | 2017-05-19 15:00 A |  | 100% | 2017-05-15 09:00 | 2017-05-19 11:30 | 4.31d | 2017-05-11 09:00 | 2017-05-15 11:00 |  |  | 9h | 9h | 1,150 | 825 | 1,150 |
| 4 | 1.1.1.1 | Estudar Domínio de Aplicação | 0.12d | 2017-05-15 09:00 A | 2017-05-18 15:00 A |  | 100% | 2017-05-15 09:00 | 2017-05-18 15:00 | 0.12d | 2017-05-11 09:00 | 2017-05-11 09:36 |  | Analista 01 | 1h | 1h | 150 | 150 | 150 |
| 5 | 1.1.1.2 | Reunir-se com o cliente | 0.25d | 2017-05-18 15:00 A | 2017-05-18 17:00 A | 4 | 100% | 2017-05-18 15:00 | 2017-05-18 16:00 | 0.12d | 2017-05-11 10:00 | 2017-05-11 12:00 |  | Analista 01 | 2h | 2h | 300 | 150 | 300 |
| 6 | 1.1.1.3 | Redigir PTEC | 0.5d | 2017-05-18 17:00 A | 2017-05-19 12:00 A | 5 | 100% | 2017-05-18 16:00 | 2017-05-19 09:30 | 0.31d | 2017-05-12 09:00 | 2017-05-12 14:48 | start no earlier than 2017-05-12 09:00 | Analista 01 | 4h | 4h | 600 | 375 | 600 |
| 7 | 1.1.1.4 | Revisar PTEC | 0.12d | 2017-05-19 13:00 A | 2017-05-19 14:00 A | 6 | 100% | 2017-05-19 09:30 | 2017-05-19 10:30 | 0.12d | 2017-05-15 09:00 | 2017-05-15 10:00 |  | Analista 02 | 1h | 1h | 100 | 150 | 100 |
| 8 | 1.1.1.5 | Aprovar PTEC | 0.12d | 2017-05-19 14:00 A | 2017-05-19 15:00 A | 7 | 100% | 2017-05-19 10:30 | 2017-05-19 11:30 | 0.12d | 2017-05-15 10:00 | 2017-05-15 11:00 |  | Cliente | 1h | 1h |  |  |  |
| 9 | 1.1.2 | **Est. Prel. Tam.** | 0.31d | 2017-05-19 13:00 A | 2017-05-19 15:30 A |  | 100% | 2017-05-19 09:30 | 2017-05-19 11:30 | 0.25d | 2017-05-15 09:00 | 2017-05-15 11:00 |  |  | 2.5h | 2.5h | 350 | 250 | 350 |
| 10 | 1.1.2.1 | Estimativa Tamanho do Projeto | 0.25d | 2017-05-19 13:00 A | 2017-05-19 15:00 A | 6 | 100% | 2017-05-19 09:30 | 2017-05-19 10:30 | 0.12d | 2017-05-15 09:00 | 2017-05-15 10:00 |  | Analista 01 | 2h | 2h | 300 | 150 | 300 |
| 11 | 1.1.2.2 | Revisar Estimativas de Tamanho do Projeto | 0.06d | 2017-05-19 15:00 A | 2017-05-19 15:30 A | 10 | 100% | 2017-05-19 10:30 | 2017-05-19 11:30 | 0.12d | 2017-05-15 10:00 | 2017-05-15 11:00 |  | Analista 02 | 0.5h | 0.5h | 50 | 100 | 50 |
| 12 | 1.1.3 | **Est. Prel. Cronograma e Orçamento** | 0.31d | 2017-05-19 15:30 A | 2017-05-19 18:00 A |  | 100% | 2017-05-19 11:30 | 2017-05-19 14:00 | 0.19d | 2017-05-15 11:00 | 2017-05-15 15:00 |  |  | 2.5h | 2.5h | 350 | 200 | 350 |
| 13 | 1.1.3.1 | Elaborar Cronograma e Orçamento Preliminares | 0.25d | 2017-05-19 15:30 A | 2017-05-19 17:30 A | 11 | 100% | 2017-05-19 11:30 | 2017-05-19 13:30 | 0.12d | 2017-05-15 11:00 | 2017-05-15 14:00 |  | Analista 01 | 2h | 2h | 300 | 150 | 300 |
| 14 | 1.1.3.2 | Revisar Cronograma e Orçamento Preliminares | 0.06d | 2017-05-19 17:30 A | 2017-05-19 18:00 A | 13 | 100% | 2017-05-19 13:30 | 2017-05-19 14:00 | 0.06d | 2017-05-15 14:00 | 2017-05-15 15:00 |  | Analista 02 | 0.5h | 0.5h | 50 | 50 | 50 |
| 15 | 1.2 | **Análise** | 5.71d? | 2017-05-19 15:00 A | 2017-05-29 11:40 A |  | 100% | 2017-05-19 11:30 | 2017-05-26 13:10 | 5.08d? | 2017-05-17 10:00 | 2017-05-31 14:40 |  |  | 42h | 42h | 6,100 | 5,350 | 6,100 |
| 16 | 1.2.1 | **Documento de Requisitos** | 5d? | 2017-05-19 15:00 A | 2017-05-26 15:00 A |  | 100% | 2017-05-19 11:30 | 2017-05-25 15:30 | 4.38d? | 2017-05-17 10:00 | 2017-05-24 13:12 |  |  | 38h | 38h | 5,550 | 4,800 | 5,550 |
| 17 | 1.2.1.1 | Reunir-se com o cliente | 0.5d | 2017-05-19 15:00 A | 2017-05-22 12:00 A | 8 | 100% | 2017-05-19 11:30 | 2017-05-22 09:30 | 0.5d | 2017-05-17 10:00 | 2017-05-18 10:00 |  | Analista 01 | 4h | 4h | 600 | 600 | 600 |
| 18 | 1.2.1.2 | Elaborar Documento de Requisitos | 3.75d | 2017-05-22 13:00 A | 2017-05-26 10:00 A | 17 | 100% | 2017-05-22 09:30 | 2017-05-25 10:30 | 3.12d | 2017-05-17 17:00 | 2017-05-24 10:12 |  | Analista 01 | 30h | 30h | 4,500 | 3,750 | 4,500 |
| 19 | 1.2.1.3 | Revisar Documento de Requisitos | 0.38d | 2017-05-26 10:00 A | 2017-05-26 14:00 A | 18 | 100% | 2017-05-25 10:30 | 2017-05-25 14:30 | 0.38d | 2017-05-22 17:00 | 2017-05-24 13:12 |  | Analista 02 | 3h | 3h | 300 | 300 | 300 |
| 20 | 1.2.1.4 | Submeter Documento de Requisitos para Aprovação do Cliente | 0.12d? | 2017-05-26 14:00 A | 2017-05-26 15:00 A | 19 | 100% | 2017-05-25 14:30 | 2017-05-25 15:30 | 0.12d? | 2017-05-23 11:00 | 2017-05-23 12:00 |  | Analista 01 | 1h | 1h | 150 | 150 | 150 |
| 21 | 1.2.2 | **MRB** | 0.71d? | 2017-05-26 15:00 A | 2017-05-29 11:40 A |  | 100% | 2017-05-25 15:30 | 2017-05-26 13:10 | 0.71d? | 2017-05-29 11:00 | 2017-05-31 14:40 |  |  | 4h | 4h | 550 | 550 | 550 |
| 22 | 1.2.2.1 | Elaborar MRB | 0.38d? | 2017-05-26 15:00 A | 2017-05-26 18:00 A | 20 | 100% | 2017-05-25 15:30 | 2017-05-26 09:30 | 0.38d? | 2017-05-29 11:00 | 2017-05-30 12:00 |  | Analista 01 | 3h | 3h | 450 | 450 | 450 |
| 23 | 1.2.2.2 | Revisar MRB | 0.33d? | 2017-05-29 09:00 A | 2017-05-29 11:40 A | 22 | 100% | 2017-05-26 09:30 | 2017-05-26 13:10 | 0.33d? | 2017-05-30 11:00 | 2017-05-31 14:40 |  | Analista 02 [37.5%] | 1h | 1h | 100 | 100 | 100 |
| 24 | 1.3 | **Projeto** | 1.16d | 2017-05-29 11:40 A | 2017-05-30 13:55 A |  | 100% | 2017-05-26 13:10 | 2017-05-29 14:25 | 1.16d | 2017-05-31 11:00 | 2017-06-02 15:24 |  |  | 9.25h | 9.25h | 1,287.5 | 1,287.5 | 1,287.5 |
| 25 | 1.3.1 | **Diagrama de Classes** | 0.62d | 2017-05-29 11:40 A | 2017-05-29 17:40 A |  | 100% | 2017-05-26 13:10 | 2017-05-29 09:10 | 0.62d | 2017-05-31 11:00 | 2017-06-01 14:24 |  |  | 5h | 5h | 700 | 700 | 700 |
| 26 | 1.3.1.1 | Elaborar Diagrama de Classes | 0.38d | 2017-05-29 11:40 A | 2017-05-29 15:40 A | 23 | 100% | 2017-05-26 13:10 | 2017-05-26 16:10 | 0.38d | 2017-05-31 11:00 | 2017-05-31 17:00 |  | Analista 01 | 3h | 3h | 450 | 450 | 450 |
| 27 | 1.3.1.2 | Revisar Diagrama de Classes | 0.12d | 2017-05-29 15:40 A | 2017-05-29 16:40 A | 26 | 100% | 2017-05-26 16:10 | 2017-05-26 17:10 | 0.12d | 2017-06-01 10:00 | 2017-06-01 11:48 |  | Analista 02 | 1h | 1h | 100 | 100 | 100 |
| 28 | 1.3.1.3 | Atualizar MRB | 0.12d | 2017-05-29 16:40 A | 2017-05-29 17:40 A | 27 | 100% | 2017-05-26 17:10 | 2017-05-29 09:10 | 0.12d | 2017-06-01 11:24 | 2017-06-01 14:24 |  | Analista 01 | 1h | 1h | 150 | 150 | 150 |

| ID | WBS | Task | Duration | Start | Finish | Predecessors | Complete | Baseline start | Baseline finish | Baseline duration | Baseline 1 start | Baseline 1 finish | Resources | Work | Actual work | Cost | Baseline cost | Actual cost |
| --- | --- | --- | --- | --- | --- | --- | --- | --- | --- | --- | --- | --- | --- | --- | --- | --- | --- | --- |
| 29 | 1.3.2 | **Modelo Entidade Relacionamento** | 0.53d | 2017-05-29 17:40 A | 2017-05-30 13:55 A |  | 100% | 2017-05-29 09:10 | 2017-05-29 14:25 | 0.53d | 2017-06-01 14:24 | 2017-06-02 15:24 |  | 4.25h | 4.25h | 587.5 | 587.5 | 587.5 |
| 30 | 1.3.2.1 | Elaborar MER | 0.41d | 2017-05-29 17:40 A | 2017-05-30 11:55 A | 28 | 100% | 2017-05-29 09:10 | 2017-05-29 13:25 | 0.41d | 2017-06-01 14:24 | 2017-06-02 10:24 | Analista 01 | 3.25h | 3.25h | 487.5 | 487.5 | 487.5 |
| 31 | 1.3.2.2 | Revisar MER | 0.12d | 2017-05-30 11:55 A | 2017-05-30 13:55 A | 30 | 100% | 2017-05-29 13:25 | 2017-05-29 14:25 | 0.12d | 2017-06-02 14:24 | 2017-06-02 15:24 | Analista 02 | 1h | 1h | 100 | 100 | 100 |
| 32 | 1.4 | **Implementação e Teste** | 2.85d? | 2017-05-30 13:55 A | 2017-06-02 11:45 A |  | 100% | 2017-05-29 14:25 | 2017-06-13 09:37 | 10.53d? | 2017-05-15 09:00 | 2017-06-28 14:36 |  | 42.85h | 42.85h | 2,115 | 9,425 | 2,115 |
| 33 | 1.4.1 | Implantar o Mantis | 1d? | 2017-05-30 13:55 A | 2017-05-31 13:55 A | 24, 20 | 100% | 2017-05-29 14:25 | 2017-05-30 14:25 | 1d? | 2017-05-15 09:00 | 2017-05-15 18:00 |  | 18h | 18h |  |  |  |
| 34 | 1.4.2 | Criar o Git | 0.1d | 2017-05-30 13:55 A | 2017-05-30 14:43 A | 24, 20 | 100% | 2017-05-29 14:25 | 2017-05-29 15:13 | 0.1d | 2017-06-02 15:24 | 2017-06-02 16:12 |  | 1h | 1h |  |  |  |
| 35 | 1.4.3 | **Release 01** | 1.11d | 2017-05-30 14:43 A | 2017-05-31 15:36 A |  | 100% | 2017-05-29 15:13 | 2017-06-08 14:13 | 7.88d | 2017-06-02 15:24 | 2017-06-09 13:24 |  | 4.85h | 4.85h | 615 | 4,800 | 615 |
| 36 | 1.4.3.1 | **Implementação** | 0.45d | 2017-05-30 14:43 A | 2017-05-31 09:21 A | 34 | 100% | 2017-05-29 15:13 | 2017-06-02 10:13 | 3.5d | 2017-06-02 15:24 | 2017-06-09 11:24 |  | 2.6h | 2.6h | 390 | 4,200 | 390 |
| 37 | 1.4.3.1.1 | Implementar Banco de Dados | 0.19d | 2017-05-30 14:43 A | 2017-05-30 16:13 A |  | 100% | 2017-05-29 15:13 | 2017-06-01 10:13 | 2.5d | 2017-06-02 15:24 | 2017-06-06 17:24 | Analista 01 | 1.5h | 1.5h | 225 | 3,000 | 225 |
| 38 | 1.4.3.1.2 | Implementar RFC01 - Controlar Usuários e Perfis de Usuários | 0.04d | 2017-05-31 09:00 A | 2017-05-31 09:21 A | 37 | 100% | 2017-06-01 15:13 | 2017-06-02 10:13 | 0.5d | 2017-06-02 17:24 | 2017-06-09 10:24 | Analista 01 | 0.35h | 0.35h | 52.5 | 600 | 52.5 |
| 39 | 1.4.3.1.3 | Implementar RFC02 - Manter Grupo Familiar | 0.09d | 2017-05-30 16:13 A | 2017-05-30 16:58 A | 37 | 100% | 2017-06-01 10:13 | 2017-06-01 15:13 | 0.5d | 2017-06-02 15:24 | 2017-06-09 11:24 | Analista 01 | 0.75h | 0.75h | 112.5 | 600 | 112.5 |
| 40 | 1.4.3.2 | **Teste** | 0.92d | 2017-05-30 16:13 A | 2017-05-31 15:36 A |  | 100% | 2017-06-01 10:13 | 2017-06-08 14:13 | 5.38d | 2017-06-05 15:24 | 2017-06-09 13:24 |  | 2.25h | 2.25h | 225 | 600 | 225 |
| 41 | 1.4.3.2.1 | Testar RFC01 - Controlar Usuários e Perfis de Usuários | 0.12d | 2017-05-30 16:13 A | 2017-05-30 17:13 A | 37 | 100% | 2017-06-01 10:13 | 2017-06-06 17:13 | 0.38d | 2017-06-05 15:24 | 2017-06-09 11:24 | Analista 02 | 1h | 1h | 100 | 300 | 100 |
| 42 | 1.4.3.2.2 | Testar RFC02 - Manter Grupo Familiar | 0.16d | 2017-05-31 14:21 A | 2017-05-31 15:36 A | 38 | 100% | 2017-06-02 15:13 | 2017-06-08 14:13 | 0.38d | 2017-06-05 15:24 | 2017-06-09 13:24 | Analista 02 | 1.25h | 1.25h | 125 | 300 | 125 |
| 43 | 1.4.4 | **Release 02** | 0.69d | 2017-05-31 09:21 A | 2017-05-31 15:51 A |  | 100% | 2017-06-02 10:13 | 2017-06-05 14:13 | 1.38d | 2017-06-05 16:24 | 2017-06-13 17:36 |  | 3h | 3h | 100 | 800 | 100 |
| 44 | 1.4.4.1 | **Implementação** | 0.56d | 2017-05-31 09:21 A | 2017-05-31 14:51 A |  | 100% | 2017-06-02 10:13 | 2017-06-05 10:13 | 1d | 2017-06-05 16:24 | 2017-06-13 15:36 |  | 1h | 1h | 100 | 800 | 100 |
| 45 | 1.4.4.1.1 | Implementar RFC03 - Controlar Oficinas | 0.06d | 2017-05-31 14:21 A | 2017-05-31 14:51 A | 36 | 100% | 2017-06-02 15:13 | 2017-06-05 10:13 | 0.5d | 2017-06-09 13:24 | 2017-06-13 13:24 | Analista 02 | 0.5h | 0.5h | 50 | 400 | 50 |
| 46 | 1.4.4.1.2 | Implementar RFC05 - Manter Agendamento | 0.06d | 2017-05-31 09:21 A | 2017-05-31 09:51 A | 36 | 100% | 2017-06-02 10:13 | 2017-06-02 15:13 | 0.5d | 2017-06-13 13:24 | 2017-06-13 15:36 | Analista 02 | 0.5h | 0.5h | 50 | 400 | 50 |
| 47 | 1.4.4.2 | **Teste** | 0.62d | 2017-05-31 09:51 A | 2017-05-31 15:51 A |  | 100% | 2017-06-02 15:13 | 2017-06-05 14:13 | 0.88d | 2017-06-06 16:24 | 2017-06-13 17:36 |  | 2h | 2h |  |  |  |
| 48 | 1.4.4.2.1 | Testar RFC03 - Controlar Oficinas | 0.12d | 2017-05-31 14:51 A | 2017-05-31 15:51 A | 45 | 100% | 2017-06-05 10:13 | 2017-06-05 14:13 | 0.38d | 2017-06-13 13:24 | 2017-06-13 15:24 | Analista 01, Analista 05 | 1h | 1h |  |  |  |
| 49 | 1.4.4.2.2 | Testar RFC05 - Manter Agendamento | 0.12d | 2017-05-31 09:51 A | 2017-05-31 10:51 A | 46 | 100% | 2017-06-02 15:13 | 2017-06-05 09:13 | 0.38d | 2017-06-13 15:36 | 2017-06-13 17:36 | Analista 01, Analista 03 | 1h | 1h |  |  |  |
| 50 | 1.4.5 | **Release 03** | 0.19d? | 2017-05-31 15:51 A | 2017-05-31 17:21 A | 43 | 100% | 2017-06-05 14:13 | 2017-06-07 11:13 | 1.75d? | 2017-06-13 17:36 | 2017-06-21 09:36 |  | 3h | 3h | 200 | 600 | 200 |
| 51 | 1.4.5.1 | **Implementação** | 0.06d? | 2017-05-31 15:51 A | 2017-05-31 16:21 A |  | 100% | 2017-06-05 14:13 | 2017-06-06 09:13 | 0.5d? | 2017-06-13 17:36 | 2017-06-19 17:36 |  | 1h | 1h |  |  |  |
| 52 | 1.4.5.1.1 | Implementar RFC06 - Manter Atendimento | 0.06d | 2017-05-31 15:51 A | 2017-05-31 16:21 A | 43 | 100% | 2017-06-05 14:13 | 2017-06-06 09:13 | 0.5d | 2017-06-13 17:36 | 2017-06-14 11:36 | Analista 03, Analista 4, Analista 5 | 0.5h | 0.5h |  |  |  |
| 53 | 1.4.5.1.2 | Implementar RFC07 - Manter Diagnóstico | 0.06d? | 2017-05-31 15:51 A | 2017-05-31 16:21 A | 43 | 100% | 2017-06-05 14:13 | 2017-06-06 09:13 | 0.5d? | 2017-06-14 11:36 | 2017-06-15 11:36 | Analista 03, Analista 4, Analista 5 | 0.5h | 0.5h |  |  |  |

| ID | WBS | Task | Duration | Start | Finish | Predecessors | Complete | Baseline start | Baseline finish | Baseline duration | Baseline 1 start | Baseline 1 finish | Constraint | Resources | Work | Actual work | Cost | Baseline cost | Actual cost |
| --- | --- | --- | --- | --- | --- | --- | --- | --- | --- | --- | --- | --- | --- | --- | --- | --- | --- | --- | --- |
| 54 | 1.4.5.2 | **Teste** | 0.12d? | 2017-05-31 16:21 A | 2017-05-31 17:21 A |  | 100% | 2017-06-06 09:13 | 2017-06-07 11:13 | 1.25d? | 2017-06-14 11:36 | 2017-06-21 09:36 |  |  | 2h | 2h | 200 | 600 | 200 |
| 55 | 1.4.5.2.1 | Testar RFC06 - Manter Atendimento | 0.12d | 2017-05-31 16:21 A | 2017-05-31 17:21 A | 52 | 100% | 2017-06-06 09:13 | 2017-06-06 13:13 | 0.38d | 2017-06-14 11:36 | 2017-06-14 14:36 |  | Analista 02 | 1h | 1h | 100 | 300 | 100 |
| 56 | 1.4.5.2.2 | Testar RFC07 - Manter Diagnóstico | 0.12d? | 2017-05-31 16:21 A | 2017-05-31 17:21 A | 53 | 100% | 2017-06-06 09:13 | 2017-06-07 11:13 | 1.25d? | 2017-06-15 11:36 | 2017-06-16 13:36 |  | Analista 02 | 1h | 1h | 100 | 300 | 100 |
| 57 | 1.4.6 | **Release 04** | 1.43d | 2017-05-31 17:21 A | 2017-06-02 11:45 A |  | 100% | 2017-06-07 11:13 | 2017-06-13 09:37 | 3.8d | 2017-06-21 09:36 | 2017-06-28 14:36 |  |  | 13h | 13h | 1,200 | 3,225 | 1,200 |
| 58 | 1.4.6.1 | **Implementação** | 1.18d | 2017-05-31 17:21 A | 2017-06-02 09:45 A |  | 100% | 2017-06-07 11:13 | 2017-06-12 09:37 | 2.8d | 2017-06-21 09:36 | 2017-06-28 11:36 |  |  | 9h | 9h | 1,000 | 2,625 | 1,000 |
| 59 | 1.4.6.1.1 | Implementar RFC08 - Manter Assistente Social | 0.06d | 2017-05-31 17:21 A | 2017-05-31 17:51 A | 50 | 100% | 2017-06-07 11:13 | 2017-06-07 16:13 | 0.5d | 2017-06-21 09:36 | 2017-06-21 11:36 |  | Analista 04 | 0.5h | 0.5h |  |  |  |
| 60 | 1.4.6.1.2 | Implementar RFC09 - Manter Avaliações | 0.06d | 2017-05-31 17:21 A | 2017-05-31 17:51 A | 50 | 100% | 2017-06-07 11:13 | 2017-06-07 16:13 | 0.5d | 2017-06-28 09:36 | 2017-06-28 11:36 |  | Analista 04 | 0.5h | 0.5h |  |  |  |
| 61 | 1.4.6.1.3 | Implementar RFC04 - Relatórios | 1d | 2017-05-31 17:21 A | 2017-06-02 09:45 A | 50 | 100% | 2017-06-07 11:13 | 2017-06-12 09:37 | 2.62d | 2017-06-21 09:36 | 2017-06-21 14:00 |  | Analista 03 | 8h | 8h | 1,000 | 2,625 | 1,000 |
| 62 | 1.4.6.2 | **Teste** | 1.36d | 2017-05-31 17:51 A | 2017-06-02 11:45 A |  | 100% | 2017-06-07 16:13 | 2017-06-13 09:37 | 3.3d | 2017-06-21 09:36 | 2017-06-28 14:36 |  |  | 4h | 4h | 200 | 600 | 200 |
| 63 | 1.4.6.2.1 | Testar RFC08 - Manter Assistente Social | 0.12d | 2017-05-31 17:51 A | 2017-06-01 09:51 A | 59 | 100% | 2017-06-07 16:13 | 2017-06-08 10:13 | 0.38d | 2017-06-28 11:36 | 2017-06-28 14:36 |  | Analista 02 | 1h | 1h | 100 | 300 | 100 |
| 64 | 1.4.6.2.2 | Testar RFC09 - Manter Avaliações | 0.12d | 2017-05-31 17:51 A | 2017-06-01 09:51 A | 60 | 100% | 2017-06-07 16:13 | 2017-06-08 10:13 | 0.38d | 2017-06-21 11:36 | 2017-06-21 14:36 |  | Analista 02 | 1h | 1h | 100 | 300 | 100 |
| 65 | 1.4.6.2.3 | Testar RFC04 - Relatórios | 0.25d | 2017-06-02 09:45 A | 2017-06-02 11:45 A | 61 | 100% | 2017-06-12 09:37 | 2017-06-13 09:37 | 1d | 2017-06-28 11:36 | 2017-06-28 14:36 |  | Analista 01, Analista 05 | 2h | 2h |  |  |  |
| 66 | 1.5 | **Planejamento, Monitoramento e Controle** | 32d? | 2017-05-15 09:00 A | 2017-06-27 18:00 A |  | 100% | 2017-05-15 09:00 | 2017-06-27 18:00 | 32d? | 2017-05-15 09:00 | 2017-06-27 18:00 |  |  | 15h | 15h | 2,000 | 1,000 | 2,000 |
| 67 | 1.5.1 | Acompanhar Projeto | 1.25d | 2017-06-26 16:00 A | 2017-06-27 18:00 A |  | 100% | 2017-06-27 13:00 | 2017-06-27 18:00 | 0.62d | 2017-06-22 09:00 | 2017-06-27 18:00 | finish no earlier than 2017-06-27 18:00 | Gerente do Projeto | 10h | 10h | 2,000 | 1,000 | 2,000 |
| 68 | 1.5.2 | Controle de Mudanças | 0.62d? | 2017-05-15 09:00 A | 2017-05-15 15:00 A |  | 100% | 2017-05-15 09:00 | 2017-05-15 15:00 | 0.62d? | 2017-05-15 09:00 | 2017-05-15 18:00 |  |  | 5h | 5h |  |  |  |
| 69 | 1.6 | Encerramento | 1.25d | 2017-06-28 09:00 A | 2017-06-29 11:00 A | 57 | 100% | 2017-06-28 09:00 | 2017-06-29 17:15 | 1.91d | 2017-06-28 09:00 | 2017-07-03 09:24 | start no earlier than 2017-06-28 09:00 | Gerente do Projeto | 10h | 10h | 2,000 | 3,050 | 2,000 |
